# Slappy Games-Gantt_Chart-8_07_04

Schedule from MS Project, 2004-06-30 to 2004-09-25, 24 hours a day, A marks actual dates.

## Calendars

- 24 Hours: Mon-Sun 00:00-24:00.

## Resources

| Resource |
| --- |
| Allan |
| Daron |
| Kevin |
| Matt |
| Dan |

## Schedule

| ID | WBS | Task | Type | Duration | Start | Finish | Predecessors | Complete | Remaining | Baseline start | Baseline finish | Baseline duration | Total slack | Constraint | Resources | Work | Actual work |
| --- | --- | --- | --- | --- | --- | --- | --- | --- | --- | --- | --- | --- | --- | --- | --- | --- | --- |
| 1 | 1 | **Super Pillow Fighter (Slappy Game)** |  | 87.38d? | 2004-06-30 A | 2004-09-25 |  | 58% | 37.1d? | 2004-07-21 | 2004-07-21 | 0.33d? | 0d |  |  | 15710.2h | 8943.58h |
| 2 | 1.1 | **Milestones** |  | 87.38d? | 2004-06-30 A | 2004-09-25 |  | 58% | 37.1d? |  |  |  | 0d |  |  | 15710.2h | 8943.58h |
| 3 | 1.1.1 | Feature Frag #1 | milestone | 0.38d? | 2004-08-12 | 2004-08-12 |  |  |  |  |  |  | 44d | start no earlier than 2004-08-12 |  |  |  |
| 4 | 1.1.2 | Feature Frag #2 | milestone | 0.38d? | 2004-08-24 | 2004-08-24 |  |  |  |  |  |  | 32d | start no earlier than 2004-08-24 |  |  |  |
| 5 | 1.1.3 | Alpha | milestone | 0.38d? | 2004-09-02 | 2004-09-02 |  |  |  |  |  |  | 23d | start no earlier than 2004-09-02 |  |  |  |
| 6 | 1.1.4 | Beta | milestone | 0.38d? | 2004-09-16 | 2004-09-16 |  |  |  |  |  |  | 9d | start no earlier than 2004-09-16 |  |  |  |
| 7 | 1.1.5 | Final | milestone | 0.38d? | 2004-09-23 | 2004-09-23 |  |  |  |  |  |  | 2d | start no earlier than 2004-09-23 |  |  |  |
| 8 | 1.1.6 | Archive | milestone | 0.38d? | 2004-09-25 | 2004-09-25 |  |  |  |  |  |  | 0d | start no earlier than 2004-09-25 |  |  |  |
| 9 | 1.1.7 | **Programming** |  | 56.62d? | 2004-07-25 A | 2004-09-20 |  | 58% | 23.73d? | 2004-07-21 | 2004-07-21 | 0.33d? | 5.38d |  |  | 15710.2h | 8943.58h |
| 10 | 1.1.7.1 | **Rendering** |  | 51d? | 2004-07-25 A | 2004-09-14 |  | 27% | 37.06d? | 2004-07-21 | 2004-07-21 | 0.33d? | 11d |  | Kevin | 2583.12h | 576.46h |
| 11 | 1.1.7.1.1 | Planning |  | 7d | 2004-07-25 A | 2004-08-01 A |  | 100% |  |  |  |  |  | finish no earlier than 2004-08-01 | Kevin | 168h | 168h |
| 12 | 1.1.7.1.2 | Vertex Transforms |  | 2.38d | 2004-08-14 A | 2004-08-16 A |  | 100% |  |  |  |  |  | start no earlier than 2004-08-14 | Kevin | 57.12h | 57.12h |
| 13 | 1.1.7.1.3 | Sorting |  | 4d | 2004-08-26 | 2004-08-30 |  |  |  |  |  |  | 26.38d | start no earlier than 2004-08-26 | Kevin | 96h |  |
| 14 | 1.1.7.1.4 | Texturing |  | 4d | 2004-08-21 A | 2004-09-01 |  | 5% | 3.8d |  |  |  | 24.57d | start no earlier than 2004-08-21 | Kevin | 96h | 4.8h |
| 15 | 1.1.7.1.5 | Lighting |  | 5d | 2004-08-25 A | 2004-09-05 |  | 10% | 4.5d |  |  |  | 19.88d |  | Kevin | 120h | 12h |
| 16 | 1.1.7.1.6 | Camera |  | 3.38d | 2004-09-05 | 2004-09-08 |  |  |  |  |  |  | 17d | start no earlier than 2004-09-05 | Kevin | 81h |  |
| 17 | 1.1.7.1.7 | **Effects** |  | 12.38d? | 2004-09-02 | 2004-09-14 |  |  |  |  |  |  | 11d |  | Kevin | 741h |  |
| 18 | 1.1.7.1.7.1 | Water |  | 3d | 2004-09-02 | 2004-09-05 |  |  |  |  |  |  | 20.38d | start no earlier than 2004-09-02 | Kevin | 72h |  |
| 19 | 1.1.7.1.7.2 | **Shadows** |  | 7.38d? | 2004-09-05 | 2004-09-12 |  |  |  |  |  |  | 13d |  | Kevin | 315h |  |
| 20 | 1.1.7.1.7.2.1 | Generate Shadow Texture |  | 2.38d? | 2004-09-05 | 2004-09-07 |  |  |  |  |  |  | 18d | finish no earlier than 2004-09-07 | Kevin | 57h |  |
| 21 | 1.1.7.1.7.2.2 | Apply Shadow Texture |  | 3.38d? | 2004-09-09 | 2004-09-12 |  |  |  |  |  |  | 13d | finish no earlier than 2004-09-12 | Kevin | 81h |  |
| 22 | 1.1.7.1.7.3 | Backgrounds |  | 2.38d | 2004-09-12 | 2004-09-14 |  |  |  |  |  |  | 11d | finish no earlier than 2004-09-14 | Kevin | 57h |  |
| 23 | 1.1.7.2 | **Level Manager** |  | 13d | 2004-08-12 A | 2004-08-25 A |  | 100% |  |  |  |  |  |  | Kevin | 600h | 600h |
| 24 | 1.1.7.2.1 | Planning |  | 4d | 2004-08-12 A | 2004-08-16 A |  | 100% |  |  |  |  |  | start no earlier than 2004-08-26 | Kevin | 96h | 96h |
| 25 | 1.1.7.2.2 | Implement |  | 4d | 2004-08-16 A | 2004-08-20 A | 24 | 100% |  |  |  |  |  | start no earlier than 2004-08-11 | Kevin | 96h | 96h |
| 26 | 1.1.7.2.3 | Test |  | 4d | 2004-08-21 A | 2004-08-25 A | 25 | 100% |  |  |  |  |  | start no earlier than 2004-08-15 | Kevin | 96h | 96h |

Notes:
- 10: Version 1.0Able to render vertices with vertex transformations, sorting and a camera / work from August 2 - August 20 / vertex transformations8/4 --> 8/6 / camera8/9 --> 8/12, / sorting8/14 -> 8/19 / testing8/20 / Version 2.0Able to add Texturing and Lighting to the scene / work from August 21 - September 1 / texturing 8/21 --> 8/25 / lighting 8/27 --> 8/31 / testing 9/1 / Version 3.0Able to produce effects - Water, shadows and backgrounds / work from September 2 - September 16 / water9/2 --> 9/5 / shadows9/5 --> 9/12 / generate shadow texture9/5 --> 9/7 / apply shadow texture9/9 --> 9/12 / backgrounds9/12 --> 9/14 / testing 9/15

| ID | WBS | Task | Duration | Start | Finish | Predecessors | Complete | Remaining | Baseline start | Baseline finish | Baseline duration | Total slack | Free slack | Constraint | Resources | Work | Actual work |
| --- | --- | --- | --- | --- | --- | --- | --- | --- | --- | --- | --- | --- | --- | --- | --- | --- | --- |
| 27 | 1.1.7.3 | **Bitmap Manager** | 2d | 2004-08-02 A | 2004-08-04 A |  | 100% |  |  |  |  |  |  |  | Kevin | 144h | 144h |
| 28 | 1.1.7.3.1 | Planning | 2d | 2004-08-02 A | 2004-08-04 A |  | 100% |  |  |  |  |  |  | start no earlier than 2004-08-02 | Kevin | 48h | 48h |
| 29 | 1.1.7.3.2 | Implement | 1d | 2004-08-03 A | 2004-08-04 A |  | 100% |  |  |  |  |  |  | start no earlier than 2004-08-03 | Kevin | 24h | 24h |
| 30 | 1.1.7.3.3 | Test | 1d | 2004-08-03 A | 2004-08-04 A |  | 100% |  |  |  |  |  |  | start no earlier than 2004-08-03 | Kevin | 24h | 24h |
| 31 | 1.1.7.4 | **Physics** | 32.2d | 2004-08-04 A | 2004-09-05 |  | 53% | 15.06d | 2004-07-21 | 2004-07-21 | 0.33d? | 20.18d |  |  | Allan | 1675.76h | 752.22h |
| 32 | 1.1.7.4.1 | Research | 5d | 2004-08-04 A | 2004-08-09 A |  | 100% |  |  |  |  |  |  | start no earlier than 2004-08-04 | Allan | 120h | 120h |
| 33 | 1.1.7.4.2 | Implement Forces and Movement | 3d | 2004-08-15 A | 2004-08-18 A | 32 | 100% |  |  |  |  |  |  |  | Allan | 72h | 72h |
| 34 | 1.1.7.4.3 | Implement Collision Detection Algorithm | 1d | 2004-08-18 A | 2004-08-19 A | 33 | 100% |  |  |  |  |  |  | start no earlier than 2004-08-08 | Allan | 24h | 24h |
| 35 | 1.1.7.4.4 | **Event Handler** | 16.62d | 2004-08-19 A | 2004-09-05 | 34 | 18% | 13.6d | 2004-07-21 | 2004-07-21 | 0.33d? | 20.18d |  |  | Allan | 686.96h | 124.8h |
| 36 | 1.1.7.4.4.1 | Basic Collision Responses | 5d | 2004-08-19 A | 2004-08-29 |  | 44% | 2.82d |  |  |  | 20.18d | 0d | start no earlier than 2004-08-11 | Allan | 120h | 52.32h |
| 37 | 1.1.7.4.4.2 | Advance Collision Responses | 5d | 2004-08-29 | 2004-09-03 | 36 |  |  |  |  |  | 20.18d | 0d | start no earlier than 2004-08-17 | Allan | 120h |  |
| 38 | 1.1.7.4.4.3 | Unit Testing | 2d | 2004-09-03 | 2004-09-05 | 37 |  |  |  |  |  | 20.18d |  |  | Allan | 48h |  |
| 39 | 1.1.7.5 | **AI** | 18d | 2004-08-23 A | 2004-09-10 |  | 3% | 17.47d | 2004-07-21 | 2004-07-21 | 0.33d? | 15.38d |  |  | Daron | 744h | 21.75h |
| 40 | 1.1.7.5.1 | AI state change / basic functionality | 5d | 2004-08-23 A | 2004-08-30 |  | 8% | 4.62d |  |  |  | 17.75d | 2.38d | start no earlier than 2004-08-23 | Daron | 120h | 9.12h |
| 41 | 1.1.7.5.2 | AI move/attempt to accomplish goals | 5d | 2004-09-02 | 2004-09-07 | 40 |  |  |  |  |  | 15.38d | 0d | start no earlier than 2004-09-02 | Daron | 120h |  |
| 42 | 1.1.7.5.3 | AI testing / debugging | 3d | 2004-09-07 | 2004-09-10 | 41 |  |  |  |  |  | 15.38d |  |  | Daron | 72h |  |
| 43 | 1.1.7.6 | **HUD** | 12d | 2004-08-18 A | 2004-08-30 |  | 51% | 5.89d | 2004-07-21 | 2004-07-21 | 0.33d? | 26.38d |  |  | Daron | 504h | 256.48h |
| 44 | 1.1.7.6.1 | Basic Hud / Bitmapped Fonts | 4d | 2004-08-18 A | 2004-08-25 |  | 90% | 0.4d |  |  |  | 30.75d |  | start no earlier than 2004-08-18 | Daron | 96h | 86.4h |
| 45 | 1.1.7.6.2 | Hud Complete | 2d | 2004-08-25 A | 2004-08-27 |  | 19% | 1.62d |  |  |  | 26.98d | 0d | start no earlier than 2004-08-25 | Daron | 48h | 9.12h |
| 46 | 1.1.7.6.3 | Hud Testing | 2d | 2004-08-27 A | 2004-08-29 | 45 | 30% | 1.4d |  |  |  | 26.38d | 0d | start no earlier than 2004-08-18 | Daron | 48h | 14.4h |
| 47 | 1.1.7.6.4 | Paused HUD | 1d | 2004-08-29 | 2004-08-30 | 46 |  |  |  |  |  | 26.38d |  |  | Daron | 24h |  |
| 48 | 1.1.7.7 | **Menu** | 21d | 2004-08-12 A | 2004-09-02 |  | 33% | 14d |  |  |  | 23.38d |  |  | Daron | 648h | 216h |
| 49 | 1.1.7.7.1 | Basic Menu | 2d | 2004-08-12 A | 2004-08-22 A |  | 100% |  |  |  |  |  |  | start no earlier than 2004-08-12 | Daron | 48h | 48h |
| 50 | 1.1.7.7.2 | Complete Menu | 3d | 2004-08-29 | 2004-09-01 | 49 |  |  |  |  |  | 23.38d | 0d | start no earlier than 2004-08-29 | Daron | 72h |  |
| 51 | 1.1.7.7.3 | Menu Testing w/ Other Modules | 1d | 2004-09-01 | 2004-09-02 | 50 |  |  |  |  |  | 23.38d |  | start no earlier than 2004-08-18 | Daron | 24h |  |

Notes:
- 27: Able to load texture, manage bitmap IDs and bind textures / work from 8/2 --> 8/4
- 31: In order for this whole module to be complete / ·Have the forces applied to all objects / ·all collsion detections must working / ·all events handling must be complete.
- 35: This will have to have all events returning correct collision responses and effects to player objects and powerup objects.. / ***NOT COMPLETE!***
- 39: ·AI should change states properly and process goals / ·AI should move towards their goals / ·Testing/Tweaking AI difficulty/ability
- 43: ·should have a complete Bitmapped font system and placeholders for player data / ·Complete pause menu / ·should completelty display all players data and handle gameover screen / ·Debuging/Tweaking
- 48: ·Will move through menus bitmaps may not exist / ·Should be visually complete, and all funcationality exempting external function testing / ·should work smoothly with external devices, such as sound, etc.

| ID | WBS | Task | Duration | Start | Finish | Predecessors | Complete | Remaining | Baseline start | Baseline finish | Baseline duration | Total slack | Free slack | Constraint | Resources | Work | Actual work |
| --- | --- | --- | --- | --- | --- | --- | --- | --- | --- | --- | --- | --- | --- | --- | --- | --- | --- |
| 52 | 1.1.7.8 | **Input** | 14d | 2004-08-04 A | 2004-08-18 A |  | 100% |  | 2004-07-21 | 2004-07-21 | 0.33d? |  |  |  | Daron | 489.12h | 489.12h |
| 53 | 1.1.7.8.1 | Basic Input | 2.38d | 2004-08-04 A | 2004-08-06 A |  | 100% |  |  |  |  |  |  | finish no earlier than 2004-08-06 | Daron | 57.12h | 57.12h |
| 54 | 1.1.7.8.2 | Input with Action functionality | 3d | 2004-08-06 A | 2004-08-09 A | 53 | 100% |  |  |  |  |  |  | start no earlier than 2004-08-05 | Daron | 72h | 72h |
| 55 | 1.1.7.8.3 | Testing Input | 1d | 2004-08-17 A | 2004-08-18 A | 54 | 100% |  |  |  |  |  |  | start no earlier than 2004-08-17 | Daron | 24h | 24h |
| 56 | 1.1.7.9 | **Content Exporter/Loader** | 28.67d? | 2004-08-05 A | 2004-09-03 |  | 99% | 0.2d? |  |  |  | 22.71d |  |  | Matt [50%]; Kevin [50%] | 3762.24h | 3733.61h |
| 57 | 1.1.7.9.1 | **Geometery** | 10d | 2004-08-12 A | 2004-08-22 A |  | 100% |  |  |  |  |  |  |  | Kevin | 1200h | 1200h |
| 58 | 1.1.7.9.1.1 | **Exporter** | 10d | 2004-08-12 A | 2004-08-22 A |  | 100% |  |  |  |  |  |  |  | Kevin | 480h | 480h |
| 59 | 1.1.7.9.1.1.1 | Implementation | 5d | 2004-08-12 A | 2004-08-17 A |  | 100% |  |  |  |  |  |  | start no earlier than 2004-08-12 | Kevin | 120h | 120h |
| 60 | 1.1.7.9.1.1.2 | Testing | 5d | 2004-08-17 A | 2004-08-22 A |  | 100% |  |  |  |  |  |  | start no earlier than 2004-08-17 | Kevin | 120h | 120h |
| 61 | 1.1.7.9.1.2 | **Importer** | 10d | 2004-08-12 A | 2004-08-22 A |  | 100% |  |  |  |  |  |  |  | Kevin | 480h | 480h |
| 62 | 1.1.7.9.1.2.1 | Implemnetation | 5d | 2004-08-12 A | 2004-08-17 A |  | 100% |  |  |  |  |  |  | start no earlier than 2004-08-12 | Kevin | 120h | 120h |
| 63 | 1.1.7.9.1.2.2 | Testing | 5d | 2004-08-17 A | 2004-08-22 A |  | 100% |  |  |  |  |  |  | start no earlier than 2004-08-17 | Kevin | 120h | 120h |
| 64 | 1.1.7.9.2 | **Animation** | 28.67d? | 2004-08-05 A | 2004-09-03 |  | 99% | 0.4d? |  |  |  | 22.71d |  |  | Matt | 1874.24h | 1850.51h |
| 65 | 1.1.7.9.2.1 | **Exporter** | 18.38d? | 2004-08-05 A | 2004-08-23 A |  | 100% |  |  |  |  |  |  |  | Matt | 699.36h | 699.36h |
| 66 | 1.1.7.9.2.1.1 | Research | 4.38d? | 2004-08-05 A | 2004-08-09 A |  | 100% |  |  |  |  |  |  | start no earlier than 2004-08-05 | Matt | 105.12h | 105.12h |
| 67 | 1.1.7.9.2.1.2 | Implementation | 4.38d? | 2004-08-17 A | 2004-08-21 A | 66 | 100% |  |  |  |  |  |  | start no earlier than 2004-08-17 | Matt | 105.12h | 105.12h |
| 68 | 1.1.7.9.2.1.3 | Unit Testing | 2d | 2004-08-21 A | 2004-08-23 A | 67 | 100% |  |  |  |  |  |  | finish no earlier than 2004-08-13 | Matt | 48h | 48h |
| 69 | 1.1.7.9.2.2 | **Loader** | 10.29d | 2004-08-23 A | 2004-09-03 | 68 | 97% | 0.3d |  |  |  | 22.71d |  |  | Matt | 486.88h | 472.76h |
| 70 | 1.1.7.9.2.2.1 | Research | 3d | 2004-08-23 A | 2004-08-26 A |  | 100% |  |  |  |  |  |  |  | Matt | 72h | 72h |
| 71 | 1.1.7.9.2.2.2 | Implementation | 5d | 2004-08-26 A | 2004-09-01 | 70 | 94% | 0.29d |  |  |  | 24.71d |  |  | Matt | 120h | 113.04h |
| 72 | 1.1.7.9.2.2.3 | Unit Testing | 2d | 2004-09-01 A | 2004-09-03 A | 71 | 100% |  |  |  |  |  |  | start no earlier than 2004-08-24 | Matt | 48h | 48h |
| 73 | 1.1.7.10 | **Animation** | 12.12d? | 2004-08-26 A | 2004-09-07 |  | 2% | 11.94d? |  |  |  | 18.25d |  |  | Matt | 1455h | 22.8h |
| 74 | 1.1.7.10.1 | **Keyframe** | 12.12d? | 2004-08-26 A | 2004-09-07 |  | 3% | 11.74d? |  |  |  | 18.25d |  |  | Matt | 582h | 18.24h |
| 75 | 1.1.7.10.1.1 | Research | 4.38d? | 2004-08-26 A | 2004-08-30 |  | 9% | 4d? |  |  |  | 18.25d | 0d | start no earlier than 2004-08-26 | Matt | 105h | 9.12h |
| 76 | 1.1.7.10.1.2 | Implementation | 4.38d? | 2004-08-30 | 2004-09-04 | 75 |  |  |  |  |  | 18.25d | 0d | finish no earlier than 2004-08-08 | Matt | 105h |  |
| 77 | 1.1.7.10.1.3 | Unit Testing | 3.38d? | 2004-09-04 | 2004-09-07 | 76 |  |  |  |  |  | 18.25d |  | start no earlier than 2004-08-09 | Matt | 81h |  |

Notes:
- 52: SEE SUB MODULES!
- 53: Will have funcationality for checking literal button presses, not actions
- 54: Will manage input processes and change them into actions
- 55: ensure stability with external functions
- 65: Complete when it can save keyframe matrices and heirarchy into to a file in the same format every time.
- 69: Completed when it can load all the information that the exporter saved to file in a predefined structure.
- 74: Complete when it can change geometry data match keyframe data specific times during an animation.

| ID | WBS | Task | Duration | Start | Finish | Predecessors | Complete | Remaining | Total slack | Free slack | Constraint | Resources | Work | Actual work |
| --- | --- | --- | --- | --- | --- | --- | --- | --- | --- | --- | --- | --- | --- | --- |
| 78 | 1.1.7.10.2 | **Interperlation** | 12.12d? | 2004-08-26 | 2004-09-07 |  |  |  | 18.25d |  |  | Matt | 582h |  |
| 79 | 1.1.7.10.2.1 | Research | 4.38d? | 2004-08-26 | 2004-08-30 |  |  |  | 18.25d | 0d | start no earlier than 2004-08-26 | Matt | 105h |  |
| 80 | 1.1.7.10.2.2 | Implementation | 4.38d? | 2004-08-30 | 2004-09-04 | 79 |  |  | 18.25d | 0d | finish no earlier than 2004-08-22 | Matt | 105h |  |
| 81 | 1.1.7.10.2.3 | Unit Testing | 3.38d? | 2004-09-04 | 2004-09-07 | 80 |  |  | 18.25d |  | start no earlier than 2004-08-23 | Matt | 81h |  |
| 82 | 1.1.7.11 | Memory Manager | 2d | 2004-08-06 A | 2004-08-08 A |  | 100% |  |  |  | start no earlier than 2004-08-06 | Dan | 48h | 48h |
| 83 | 1.1.7.12 | **Base Objects** | 6.38d | 2004-08-06 A | 2004-08-12 A |  | 100% |  |  |  |  | Dan | 1161h | 1161h |
| 84 | 1.1.7.12.1 | **Base Object** | 6.38d | 2004-08-06 A | 2004-08-12 A |  | 100% |  |  |  |  |  | 144h | 144h |
| 85 | 1.1.7.12.1.1 | Planning | 4d | 2004-08-06 A | 2004-08-10 A |  | 100% |  |  |  | start no earlier than 2004-08-06 | Dan | 96h | 96h |
| 86 | 1.1.7.12.1.2 | Implement | 2d | 2004-08-10 A | 2004-08-12 A |  | 100% |  |  |  | finish no earlier than 2004-08-12 | Dan | 48h | 48h |
| 87 | 1.1.7.12.2 | **Pillow** | 6d | 2004-08-06 A | 2004-08-12 A |  | 100% |  |  |  |  | Dan | 288h | 288h |
| 88 | 1.1.7.12.2.1 | Planning | 4d | 2004-08-06 A | 2004-08-10 A |  | 100% |  |  |  | start no earlier than 2004-08-06 | Dan | 96h | 96h |
| 89 | 1.1.7.12.2.2 | Implement | 2d | 2004-08-10 A | 2004-08-12 A |  | 100% |  |  |  | start no earlier than 2004-08-10 | Dan | 48h | 48h |
| 90 | 1.1.7.12.3 | **Player** | 6d | 2004-08-06 A | 2004-08-12 A |  | 100% |  |  |  |  | Dan | 288h | 288h |
| 91 | 1.1.7.12.3.1 | Planning | 4d | 2004-08-06 A | 2004-08-10 A |  | 100% |  |  |  | start no earlier than 2004-08-06 | Dan | 96h | 96h |
| 92 | 1.1.7.12.3.2 | Implement | 2d | 2004-08-10 A | 2004-08-12 A |  | 100% |  |  |  | start no earlier than 2004-08-10 | Dan | 48h | 48h |
| 93 | 1.1.7.12.4 | **PowerUp** | 6d | 2004-08-06 A | 2004-08-12 A |  | 100% |  |  |  |  | Dan | 288h | 288h |
| 94 | 1.1.7.12.4.1 | Planning | 4d | 2004-08-06 A | 2004-08-10 A |  | 100% |  |  |  | start no earlier than 2004-08-06 | Dan | 96h | 96h |
| 95 | 1.1.7.12.4.2 | Implement | 2d | 2004-08-10 A | 2004-08-12 A |  | 100% |  |  |  | start no earlier than 2004-08-10 | Dan | 48h | 48h |
| 96 | 1.1.7.13 | **Game Manager** | 7d | 2004-08-20 A | 2004-08-27 A |  | 100% |  |  |  |  | Dan | 345.12h | 345.12h |
| 97 | 1.1.7.13.1 | Planning | 1d | 2004-08-20 A | 2004-08-21 A |  | 100% |  |  |  | start no earlier than 2004-08-20 | Dan | 24h | 24h |
| 98 | 1.1.7.13.2 | Implement | 5.38d | 2004-08-21 A | 2004-08-27 A |  | 100% |  |  |  | start no earlier than 2004-08-21 | Dan | 129.12h | 129.12h |
| 99 | 1.1.7.13.3 | Testing | 1d | 2004-08-26 A | 2004-08-27 A |  | 100% |  |  |  | start no earlier than 2004-08-26 | Dan | 24h | 24h |
| 100 | 1.1.7.14 | Profiler | 1d | 2004-08-29 A | 2004-08-30 |  | 10% | 0.9d | 26.38d |  | start no earlier than 2004-08-29 | Dan | 24h | 2.4h |
| 101 | 1.1.7.15 | Logger | 1d | 2004-08-07 A | 2004-08-08 A |  | 100% |  |  |  | start no earlier than 2004-08-07 | Dan | 24h | 24h |

Notes:
- 78: Complete when it can fill in at leasat 3 frames between each keyframe.
- 83: All functionality described in tech doc must be in place and working correctly
- 96: Must be integrated into winmain function. must correctly damage resolution and window modes, must correctly transition between game states, must interface correctly with other game modules.

| ID | WBS | Task | Type | Duration | Start | Finish | Complete | Remaining | Baseline start | Baseline finish | Baseline duration | Total slack | Constraint | Resources | Work | Actual work |
| --- | --- | --- | --- | --- | --- | --- | --- | --- | --- | --- | --- | --- | --- | --- | --- | --- |
| 102 | 1.1.7.16 | **Sound** |  | 11d | 2004-09-03 | 2004-09-14 |  |  |  |  |  | 11.38d |  | Dan | 672h |  |
| 103 | 1.1.7.16.1 | Sound FX |  | 2d | 2004-09-03 | 2004-09-05 |  |  |  |  |  | 20.38d | start no earlier than 2004-09-03 | Dan | 48h |  |
| 104 | 1.1.7.16.2 | **Music** |  | 7d | 2004-09-07 | 2004-09-14 |  |  |  |  |  | 11.38d |  | Dan | 360h |  |
| 105 | 1.1.7.16.2.1 | Research |  | 2d | 2004-09-07 | 2004-09-09 |  |  |  |  |  | 16.38d | start no earlier than 2004-09-07 | Dan | 48h |  |
| 106 | 1.1.7.16.2.2 | Planning |  | 2d | 2004-09-08 | 2004-09-10 |  |  |  |  |  | 15.38d | start no earlier than 2004-09-08 | Dan | 48h |  |
| 107 | 1.1.7.16.2.3 | Implement |  | 4d | 2004-09-10 | 2004-09-14 |  |  |  |  |  | 11.38d | start no earlier than 2004-09-10 | Dan | 96h |  |
| 108 | 1.1.7.17 | **Object Manager** |  | 7d | 2004-08-12 A | 2004-08-19 A | 100% |  |  |  |  |  |  | Dan | 312h | 312h |
| 109 | 1.1.7.17.1 | Planning |  | 1d | 2004-08-12 A | 2004-08-13 A | 100% |  |  |  |  |  | start no earlier than 2004-08-12 | Dan | 24h | 24h |
| 110 | 1.1.7.17.2 | Implement |  | 4d | 2004-08-13 A | 2004-08-17 A | 100% |  |  |  |  |  | start no earlier than 2004-08-13 | Dan | 96h | 96h |
| 111 | 1.1.7.17.3 | Test |  | 1d | 2004-08-18 A | 2004-08-19 A | 100% |  |  |  |  |  | start no earlier than 2004-08-18 | Dan | 24h | 24h |
| 112 | 1.1.7.18 | **Particle** |  | 11.62d | 2004-08-20 A | 2004-08-31 | 73% | 3.14d |  |  |  | 24.75d |  | Dan | 326.88h | 238.62h |
| 113 | 1.1.7.18.1 | Research |  | 2d | 2004-08-20 A | 2004-08-22 A | 100% |  |  |  |  |  | start no earlier than 2004-08-24 | Dan | 48h | 48h |
| 114 | 1.1.7.18.2 | Planning |  | 2d | 2004-08-22 A | 2004-08-24 A | 100% |  |  |  |  |  | start no earlier than 2004-08-27 | Dan | 48h | 48h |
| 115 | 1.1.7.18.3 | Implement |  | 2d | 2004-08-24 A | 2004-08-31 | 19% | 1.62d |  |  |  | 24.75d | start no earlier than 2004-08-24 | Dan | 48h | 9.12h |
| 116 | 1.1.7.19 | **Window Installer** |  | 4d | 2004-09-16 | 2004-09-20 |  |  |  |  |  | 5.38d |  | Dan | 192h |  |
| 117 | 1.1.7.19.1 | Research |  | 2d | 2004-09-16 | 2004-09-18 |  |  |  |  |  | 7.38d | start no earlier than 2004-09-16 | Dan | 48h |  |
| 118 | 1.1.7.19.2 | Implement |  | 2d | 2004-09-18 | 2004-09-20 |  |  |  |  |  | 5.38d | start no earlier than 2004-09-18 | Dan | 48h |  |
| 119 | 1.1.8 | **Assets** |  | 16d | 2004-08-14 | 2004-08-30 |  |  | 2004-07-21 | 2004-07-21 | 0.33d? | 26.38d |  |  |  |  |
| 120 | 1.1.8.1 | **2D ART** |  | 7d | 2004-08-14 | 2004-08-21 |  |  |  |  |  | 35.38d |  |  |  |  |
| 121 | 1.1.8.1.1 | **Menu** |  | 2d | 2004-08-17 | 2004-08-19 |  |  | 2004-07-21 | 2004-07-21 | 0.33d? | 37.38d |  |  |  |  |
| 122 | 1.1.8.1.1.1 | **Front End Menu** |  | 2d | 2004-08-17 | 2004-08-19 |  |  |  |  |  | 37.38d |  |  |  |  |
| 123 | 1.1.8.1.1.1.1 | Mini picture of each level | milestone | 0d | 2004-08-17 | 2004-08-17 |  |  |  |  |  | 39.38d | start no earlier than 2004-08-17 |  |  |  |
| 124 | 1.1.8.1.1.1.2 | 2 pillow picturees (fluffed/squished) | milestone | 0d | 2004-08-18 | 2004-08-18 |  |  |  |  |  | 38.38d | start no earlier than 2004-08-18 |  |  |  |
| 125 | 1.1.8.1.1.1.3 | Picture of Josie And Sally Fighting | milestone | 0d | 2004-08-18 | 2004-08-18 |  |  |  |  |  | 38.38d | start no earlier than 2004-08-18 |  |  |  |
| 126 | 1.1.8.1.1.1.4 | BackGround of Level/Character Select | milestone | 0d | 2004-08-19 | 2004-08-19 |  |  |  |  |  | 37.38d | start no earlier than 2004-08-19 |  |  |  |
| 127 | 1.1.8.1.1.1.5 | BackGround picture of Rubber Ducky | milestone | 0d | 2004-08-19 | 2004-08-19 |  |  |  |  |  | 37.38d | start no earlier than 2004-08-19 |  |  |  |

Notes:
- 102: Must be able to initalize, load sounds, unload sounds, and shutdown correctly. Must be able to stream music files and switch between music files.
- 108: Must correctly interface with game objects. Must have module interface in place as described in tech doc.
- 112: Must be able to create emitters and render particles to screen.
- 116: Must be able to install and uninstall game files

| ID | WBS | Task | Type | Duration | Start | Finish | Total slack | Constraint |
| --- | --- | --- | --- | --- | --- | --- | --- | --- |
| 128 | 1.1.8.1.2 | **HUD** |  | 4d | 2004-08-14 | 2004-08-18 | 38.38d |  |
| 129 | 1.1.8.1.2.1 | Picture of Characters | milestone | 0d | 2004-08-14 | 2004-08-14 | 42.38d | start no earlier than 2004-08-14 |
| 130 | 1.1.8.1.2.2 | Fonts | milestone | 0d | 2004-08-18 | 2004-08-18 | 38.38d | start no earlier than 2004-08-18 |
| 131 | 1.1.8.1.3 | **Particle Texture** |  | 4d | 2004-08-17 | 2004-08-21 | 35.38d |  |
| 132 | 1.1.8.1.3.1 | Feather | milestone | 0d | 2004-08-17 | 2004-08-17 | 39.38d | start no earlier than 2004-08-17 |
| 133 | 1.1.8.1.3.2 | Cloud Puff | milestone | 0d | 2004-08-21 | 2004-08-21 | 35.38d | start no earlier than 2004-08-21 |
| 134 | 1.1.8.1.3.3 | 3 Sparkles | milestone | 0d | 2004-08-19 | 2004-08-19 | 37.38d | start no earlier than 2004-08-19 |
| 135 | 1.1.8.1.3.4 | Cloud Trail | milestone | 0d | 2004-08-18 | 2004-08-18 | 38.38d | start no earlier than 2004-08-18 |
| 136 | 1.1.8.1.3.5 | Water Splash | milestone | 0d | 2004-08-20 | 2004-08-20 | 36.38d | start no earlier than 2004-08-20 |
| 137 | 1.1.8.1.3.6 | White Glob | milestone | 0d | 2004-08-20 | 2004-08-20 | 36.38d | start no earlier than 2004-08-20 |
| 138 | 1.1.8.2 | **3D ART** |  | 8d | 2004-08-17 | 2004-08-25 | 31.38d |  |
| 139 | 1.1.8.2.1 | **Level Objects** |  | 7d | 2004-08-18 | 2004-08-25 | 31.38d |  |
| 140 | 1.1.8.2.1.1 | Pirate Boat | milestone | 0d | 2004-08-18 | 2004-08-18 | 38.38d | start no earlier than 2004-08-18 |
| 141 | 1.1.8.2.1.2 | Whale | milestone | 0d | 2004-08-19 | 2004-08-19 | 37.38d | start no earlier than 2004-08-19 |
| 142 | 1.1.8.2.1.3 | Cannon | milestone | 0d | 2004-08-19 | 2004-08-19 | 37.38d | start no earlier than 2004-08-19 |
| 143 | 1.1.8.2.1.4 | Rubber Ducky | milestone | 0d | 2004-08-21 | 2004-08-21 | 35.38d | start no earlier than 2004-08-21 |
| 144 | 1.1.8.2.1.5 | Bar of Soap | milestone | 0d | 2004-08-22 | 2004-08-22 | 34.38d | start no earlier than 2004-08-22 |
| 145 | 1.1.8.2.1.6 | Faucet | milestone | 0d | 2004-08-23 | 2004-08-23 | 33.38d | start no earlier than 2004-08-23 |
| 146 | 1.1.8.2.1.7 | Water Gun Barrel | milestone | 0d | 2004-08-24 | 2004-08-24 | 32.38d | start no earlier than 2004-08-24 |
| 147 | 1.1.8.2.1.8 | Faucet Handles | milestone | 0d | 2004-08-25 | 2004-08-25 | 31.38d | start no earlier than 2004-08-25 |
| 148 | 1.1.8.2.2 | **Power Ups** |  | 8d | 2004-08-17 | 2004-08-25 | 31.38d |  |
| 149 | 1.1.8.2.2.1 | Pear | milestone | 0d | 2004-08-17 | 2004-08-17 | 39.38d | start no earlier than 2004-08-17 |
| 150 | 1.1.8.2.2.2 | Pineapple | milestone | 0d | 2004-08-21 | 2004-08-21 | 35.38d | start no earlier than 2004-08-21 |
| 151 | 1.1.8.2.2.3 | Grapes | milestone | 0d | 2004-08-22 | 2004-08-22 | 34.38d | start no earlier than 2004-08-22 |
| 152 | 1.1.8.2.2.4 | Ice Cream Cone | milestone | 0d | 2004-08-23 | 2004-08-23 | 33.38d | start no earlier than 2004-08-23 |
| 153 | 1.1.8.2.2.5 | Blueberry Pie | milestone | 0d | 2004-08-24 | 2004-08-24 | 32.38d | start no earlier than 2004-08-24 |
| 154 | 1.1.8.2.2.6 | Whole Turkey | milestone | 0d | 2004-08-25 | 2004-08-25 | 31.38d | start no earlier than 2004-08-25 |

| ID | WBS | Task | Type | Duration | Start | Finish | Total slack | Constraint |
| --- | --- | --- | --- | --- | --- | --- | --- | --- |
| 155 | 1.1.8.2.3 | **Models** |  | 3d | 2004-08-20 | 2004-08-23 | 33.38d |  |
| 156 | 1.1.8.2.3.1 | Josie | milestone | 0d | 2004-08-20 | 2004-08-20 | 36.38d | start no earlier than 2004-08-20 |
| 157 | 1.1.8.2.3.2 | Captain Sally's Pillow | milestone | 0d | 2004-08-23 | 2004-08-23 | 33.38d | start no earlier than 2004-08-23 |
| 158 | 1.1.8.2.3.3 | Josie's Pillow | milestone | 0d | 2004-08-20 | 2004-08-20 | 36.38d | start no earlier than 2004-08-20 |
| 159 | 1.1.8.2.3.4 | Captain Sally's Pillow | milestone | 0d | 2004-08-23 | 2004-08-23 | 33.38d | start no earlier than 2004-08-23 |
| 160 | 1.1.8.3 | **Sound** |  | 8d | 2004-08-19 | 2004-08-27 | 29.38d |  |
| 161 | 1.1.8.3.1 | **Sound FX** |  | 7d | 2004-08-19 | 2004-08-26 | 30.38d |  |
| 162 | 1.1.8.3.1.1 | Wave/Ocean Noise | milestone | 0d | 2004-08-19 | 2004-08-19 | 37.38d | start no earlier than 2004-08-19 |
| 163 | 1.1.8.3.1.2 | Wood creaking | milestone | 0d | 2004-08-19 | 2004-08-19 | 37.38d | start no earlier than 2004-08-19 |
| 164 | 1.1.8.3.1.3 | Sail/Flag in the win | milestone | 0d | 2004-08-19 | 2004-08-19 | 37.38d | start no earlier than 2004-08-19 |
| 165 | 1.1.8.3.1.4 | Blow Hole Sound (geyser) | milestone | 0d | 2004-08-19 | 2004-08-19 | 37.38d | start no earlier than 2004-08-19 |
| 166 | 1.1.8.3.1.5 | Cannon Firing Sound | milestone | 0d | 2004-08-20 | 2004-08-20 | 36.38d | start no earlier than 2004-08-20 |
| 167 | 1.1.8.3.1.6 | Body hitting wood (clunk) | milestone | 0d | 2004-08-20 | 2004-08-20 | 36.38d | start no earlier than 2004-08-20 |
| 168 | 1.1.8.3.1.7 | a "ker-plunk" sound…body falling in water | milestone | 0d | 2004-08-21 | 2004-08-21 | 35.38d | start no earlier than 2004-08-21 |
| 169 | 1.1.8.3.1.8 | water running | milestone | 0d | 2004-08-23 | 2004-08-23 | 33.38d | start no earlier than 2004-08-23 |
| 170 | 1.1.8.3.1.9 | rubber ducky squeak | milestone | 0d | 2004-08-23 | 2004-08-23 | 33.38d | start no earlier than 2004-08-23 |
| 171 | 1.1.8.3.1.10 | Bubble sounds (popping) | milestone | 0d | 2004-08-24 | 2004-08-24 | 32.38d | start no earlier than 2004-08-24 |
| 172 | 1.1.8.3.1.11 | Squirt Gun Noise | milestone | 0d | 2004-08-24 | 2004-08-24 | 32.38d | start no earlier than 2004-08-24 |
| 173 | 1.1.8.3.1.12 | Quacking noise | milestone | 0d | 2004-08-25 | 2004-08-25 | 31.38d | start no earlier than 2004-08-25 |
| 174 | 1.1.8.3.1.13 | Soft Pillow sound (pillow impact on body) | milestone | 0d | 2004-08-25 | 2004-08-25 | 31.38d | start no earlier than 2004-08-25 |
| 175 | 1.1.8.3.1.14 | Hard Pillow Sound | milestone | 0d | 2004-08-25 | 2004-08-25 | 31.38d | start no earlier than 2004-08-25 |
| 176 | 1.1.8.3.1.15 | Item Pick Sound (bling, clink clink) | milestone | 0d | 2004-08-26 | 2004-08-26 | 30.38d | start no earlier than 2004-08-26 |
| 177 | 1.1.8.3.1.16 | Item Hitting bodd (splat sound) | milestone | 0d | 2004-08-26 | 2004-08-26 | 30.38d | start no earlier than 2004-08-26 |
| 178 | 1.1.8.3.1.17 | Powerup sound FX(REV noise) | milestone | 0d | 2004-08-26 | 2004-08-26 | 30.38d | start no earlier than 2004-08-26 |

| ID | WBS | Task | Type | Duration | Start | Finish | Complete | Remaining | Baseline start | Baseline finish | Baseline duration | Total slack | Constraint |
| --- | --- | --- | --- | --- | --- | --- | --- | --- | --- | --- | --- | --- | --- |
| 179 | 1.1.8.3.2 | **Music** |  | 5d | 2004-08-22 | 2004-08-27 |  |  |  |  |  | 29.38d |  |
| 180 | 1.1.8.3.2.1 | Menu Loop | milestone | 0d | 2004-08-22 | 2004-08-22 |  |  |  |  |  | 34.38d | start no earlier than 2004-08-22 |
| 181 | 1.1.8.3.2.2 | Credit Loop | milestone | 0d | 2004-08-23 | 2004-08-23 |  |  |  |  |  | 33.38d | start no earlier than 2004-08-23 |
| 182 | 1.1.8.3.2.3 | Pirate Board loop | milestone | 0d | 2004-08-25 | 2004-08-25 |  |  |  |  |  | 31.38d | start no earlier than 2004-08-25 |
| 183 | 1.1.8.3.2.4 | Bathtub Board Loop | milestone | 0d | 2004-08-27 | 2004-08-27 |  |  |  |  |  | 29.38d | start no earlier than 2004-08-27 |
| 184 | 1.1.8.4 | **Voice Dialogue** |  | 0d | 2004-08-30 | 2004-08-30 |  |  |  |  |  | 26.38d |  |
| 185 | 1.1.8.4.1 | Josie | milestone | 0d | 2004-08-30 | 2004-08-30 |  |  |  |  |  | 26.38d | start no earlier than 2004-08-30 |
| 186 | 1.1.8.4.2 | Captain Sally | milestone | 0d | 2004-08-30 | 2004-08-30 |  |  |  |  |  | 26.38d | start no earlier than 2004-08-30 |
| 187 | 1.1.9 | **Design** |  | 34.38d? | 2004-06-30 A | 2004-08-03 | 58% | 14.61d? | 2004-07-21 | 2004-07-21 | 0.33d? | 53d |  |
| 188 | 1.1.9.1 | Tech Doc |  | 8.38d? | 2004-07-26 | 2004-08-03 |  |  | 2004-07-21 | 2004-07-21 | 0.33d? | 53d | start no earlier than 2004-07-26 |
| 189 | 1.1.9.2 | Design Doc |  | 25.38d? | 2004-06-30 A | 2004-07-25 A | 100% |  | 2004-07-21 | 2004-07-21 | 0.33d? |  | start no earlier than 2004-06-30 |
| 190 | 1.1.9.3 | Asset List |  | 10.38d? | 2004-07-20 | 2004-07-30 |  |  | 2004-07-21 | 2004-07-21 | 0.33d? | 57d | finish no earlier than 2004-07-30 |
